# Ex03

Schedule from MS Project, 2026-02-02 to 2027-04-22, costs in $.

## Calendars

- Standard: Mon-Fri 08:00-12:00, 13:00-17:00; Sat-Sun off.

## Resources

| Resource | Group | Unit | Rate |
| --- | --- | --- | --- |
| Architect | Consultant |  | 9 |
| Draftsperson | Staff |  | 7 |
| Building Clerk | Staff |  | 8 |
| Supervisor | Staff |  | 12 |
| Rigger | Wages |  | 5 |
| Boilermaker | Wages |  | 5 |
| Welder | Wages |  | 6 |
| Carpenter | Wages |  | 7 |
| Painter | Wages |  | 6 |
| Labourer | Wages |  | 6 |
| Driver | Wages |  | 8 |
| No Barrier Fencing | Contractor |  | 3 |
| Rock Solid Concrete | Contractor |  | 4 |
| Listen Ear Audio | Contractor |  | 5 |
| In Focus Video | Contractor |  | 5 |
| Pure Grass Turf | Contractor |  | 5 |
| Building Inspector | Government |  | 5 |
| High Jib Crane | Equipment |  | 7 |
| Grader | Equipment |  | 6 |
| Air Compressor | Equipment |  | 7 |
| Utility | Equipment |  | 5 |
| Electrician | Staff |  | 7 |
| Plumber | Staff |  | 5 |
| Astro Turf | Material | Square Matre | 12 |
| Paint | Ute | Ultre | 20 |
| Supervisor, Electrician |  |  |  |
| Architect, Building Clerk, Supervisor |  |  |  |

## Schedule

| ID | WBS | Task | Type | Duration | Start | Finish | Predecessors | Total slack | Free slack | Resources | Work | Cost | Dependencies |
| --- | --- | --- | --- | --- | --- | --- | --- | --- | --- | --- | --- | --- | --- |
| 1 | 1 | **Planning** |  | 88d | 2026-02-02 | 2026-06-03 |  | -45d | 0d | Air Compressor | 992h | 7,688 |  |
| 2 | 1.1 | Creating architectural plans |  | 12w | 2026-02-02 | 2026-04-24 |  | -45d | 0d | Architect [200%]; Draftsperson [200%]; Building Clerk [25%] | 360h | 2,880 |  |
| 3 | 1.2 | Submit plans for approval |  | 1mo | 2026-04-27 | 2026-05-22 | 2 | -45d | 0d | Architect | 160h | 1,440 |  |
| 4 | 1.3 | Order materials |  | 8d | 2026-05-25 | 2026-06-03 | 3 | -45d | 0d | Draftsperson; Building Clerk | 128h | 960 |  |
| 5 | 1.4 | Planning Completed | milestone, manual | 0d | 2026-04-02 | 2026-04-02 | 2, 3, 4 |  |  |  |  |  | 2,3,4 |
| 6 | 2 | **Site Works** |  | 29d | 2026-04-02 | 2026-05-12 |  | -2d | 0d |  | 572h | 4,760 |  |
| 7 | 2.1 | Erect fencing |  | 3d | 2026-04-02 | 2026-04-06 | 5 | -2d | 0d | No Barrier Fencing | 24h | 72 |  |
| 8 | 2.2 | Erect site building |  | 1d | 2026-04-07 | 2026-04-07 | 7 | -2d | 0d | Carpenter [400%]; Supervisor; Labourer | 48h | 368 |  |
| 9 | 2.3 | Clear and level site |  | 3w | 2026-04-08 | 2026-04-28 | 8 | -2d | 0d | Supervisor [200%]; Driver; Grader [200%] | 360h | 3,120 |  |
| 10 | 2.4 | Prepare drainage infrastructure |  | 1w | 2026-04-29 | 2026-05-05 | 9 | 3d |  | Plumber [200%]; Supervisor [50%] | 60h | 440 |  |
| 11 | 2.5 | Prepare cabling infrastructure |  | 2w | 2026-04-29 | 2026-05-12 | 9 | -2d | 0d | Electrician [300%]; Supervisor [50%] | 80h | 760 |  |
| 12 | 2.6 | Site Works Completed | milestone, manual | 0d | 2026-05-11 | 2026-05-11 | 7, 8, 9, 10, 11 |  |  | Rock Solid Concrete |  |  | 7,8,9,10,11 |
| 13 | 3 | **Building Construction** |  | 249d | 2026-05-11 | 2027-04-22 |  | -73d | 0d |  | 10792h | 69,648 |  |
| 14 | 3.1 | Pour foundations |  | 4d | 2026-05-11 | 2026-05-14 | 12 | -73d | 0d | Rock Solid Concrete | 32h | 128 | 12 |
| 15 | 3.2 | Erect steelwork |  | 3mo | 2026-05-15 | 2026-08-06 | 14 | -73d | 0d | Supervisor [50%]; Boilermaker [600%]; Driver [200%]; High Jib Crane; Labourer [600%]; Rigger [600%]; Utility; Welder [500%] | 3600h | 23,040 | 14 |
| 16 | 3.3 | Erect wall |  | 8mo | 2026-08-07 | 2027-03-18 | 15 | -73d | 0d | Supervisor [50%]; Air Compressor; Carpenter [700%]; Driver; Electrician [75%]; Grader; Labourer [400%]; Plumber [25%] | 2400h | 16,640 | 15 |
| 17 | 3.4 | Install roofing superstructure |  | 2w | 2027-03-19 | 2027-04-01 | 16 | -73d | 0d | Supervisor [50%]; Rigger [500%]; Boilermaker [500%]; Welder [300%]; Labourer [500%]; Driver [200%]; High Jib Crane; Utility; Air Compressor; Plumber [50%] | 1920h | 11,320 | 16 |
| 18 | 3.5 | Install roofing retracting mechanism |  | 1w | 2027-04-02 | 2027-04-08 | 17 | -73d | 0d | Supervisor [50%]; Welder; Boilermaker [200%]; Rigger [200%]; Electrician [200%]; Driver; High Jib Crane | 380h | 2,440 | 17 |
| 19 | 3.6 | Erect seating tiers |  | 3w | 2027-04-02 | 2027-04-22 | 18SS | -73d | 0d | Supervisor [50%]; Carpenter [800%]; Welder [200%]; Boilermaker [200%]; Labourer [500%]; Driver; Utility; Air Compressor | 2460h | 16,080 | 18SS |
| 20 | 3.7 | Building Construction Completed | milestone, manual | 0d | 2026-11-06 | 2026-11-06 | 14, 15, 16, 17, 18, 19 |  |  |  |  |  | 14,15,16,17,18,19 |
| 21 | 4 | **Fit Out** |  | 40d | 2026-11-06 | 2027-01-01 |  | 40d |  |  | 3080h | 18,760 |  |
| 22 | 4.1 | Fit all windows and doors |  | 2w | 2026-11-06 | 2026-11-19 | 20 | 77d | 30d | Carpenter [500%]; Labourer [200%] | 560h | 3,760 | 20 |
| 23 | 4.2 | Install electrical cabling |  | 1w | 2026-11-06 | 2026-11-12 | 20 | 69d | 0d | Electrician [300%]; Labourer [200%] | 200h | 1,320 | 20 |
| 24 | 4.3 | Install electrical fittings and fixtures |  | 2w | 2026-11-13 | 2026-11-26 | 23 | 72d | 25d | Electrician [300%] | 240h | 1,680 | 23 |
| 25 | 4.4 | Install all plumbing |  | 2w | 2026-11-06 | 2026-11-19 | 20 | 72d | 0d | Plumber [200%]; Labourer [200%] | 320h | 1,760 | 20 |
| 26 | 4.5 | Install plumbing fixtures and fitting |  | 1w | 2026-11-20 | 2026-11-26 | 25 | 72d | 25d | Plumber [200%] | 80h | 400 | 25 |
| 27 | 4.6 | Lay astro turf |  | 1w | 2026-11-06 | 2026-11-12 | 20 | 82d | 35d | Pure Grass Turf | 40h | 200 | 20 |
| 28 | 4.7 | Erect handrails and fencing |  | 2w | 2026-11-06 | 2026-11-19 | 20 | 47d | 0d | Welder [400%]; Boilermaker [200%] | 480h | 2,720 | 20 |
| 29 | 4.8 | Paint rooms, fixtures, fittings, etc. |  | 1mo | 2026-11-20 | 2026-12-17 | 28 | 47d | 0d | Painter [500%] | 800h | 4,800 | 28 |
| 30 | 4.9 | Install PA system |  | 2d | 2026-11-13 | 2026-11-16 | 23 | 70d | 23d | Listen Ear Audio | 16h | 80 | 23 |
| 31 | 4.10 | Install video imaging equipment |  | 3d | 2026-11-13 | 2026-11-17 | 23 | 69d | 22d | In Focus Video | 24h | 120 | 23 |
| 32 | 4.11 | Fit out control room |  | 2w | 2026-12-18 | 2026-12-31 | 29, 30, 31 | 47d | 0d | Electrician [200%]; Listen Ear Audio; In Focus Video | 320h | 1,920 |  |
| 33 | 4.12 | Fit Out Completed | milestone, manual | 0d | 2027-01-01 | 2027-01-01 | 22, 23, 24, 25, 26, 27, 28, 29, 30, 31, 32 |  |  |  |  |  |  |

| ID | WBS | Task | Type | Duration | Start | Finish | Predecessors | Total slack | Free slack | Resources | Work | Cost |
| --- | --- | --- | --- | --- | --- | --- | --- | --- | --- | --- | --- | --- |
| 34 | 5 | **Commissioning** |  | 33d | 2027-01-01 | 2027-02-17 |  | 33d |  |  | 712h | 4,176 |
| 35 | 5.1 | Test roof mechanism |  | 3w | 2027-01-01 | 2027-01-21 | 33 | 47d | 0d | Supervisor, Electrician [200%] | 240h |  |
| 36 | 5.2 | Test PA system |  | 1d | 2027-01-01 | 2027-01-01 | 33 | 61d | 14d | Listen Ear Audio | 8h | 40 |
| 37 | 5.3 | Test video imaging equipment |  | 1d | 2027-01-01 | 2027-01-01 | 33 | 61d | 14d | In Focus Video | 8h | 40 |
| 38 | 5.4 | Test control room equipment |  | 2w | 2027-01-22 | 2027-02-04 | 35, 36, 37 | 47d | 0d | Supervisor; Listen Ear Audio [20%]; In Focus Video [20%]; Architect; Electrician [200%] | 352h | 2,960 |
| 39 | 5.5 | Obtain official occupancy |  | 2d | 2027-02-05 | 2027-02-08 | 38 | 47d | 0d | Architect; Building Clerk; Supervisor | 48h | 464 |
| 40 | 5.6 | Obtain safety certification |  | 1w | 2027-02-09 | 2027-02-15 | 39 | 47d | 0d | Supervisor | 40h | 480 |
| 41 | 5.7 | Official opening |  | 1d | 2027-02-16 | 2027-02-16 | 40 | 47d | 0d | Supervisor [200%] | 16h | 192 |
| 42 | 5.8 | Commissioning Completed | milestone, manual | 0d | 2027-02-17 | 2027-02-17 | 35, 36, 37, 38, 39, 40, 41 |  |  |  |  |  |
