# Ex03

Schedule from MS Project, 2026-02-02 to 2027-02-17, status date 2026-10-18, costs in $, A marks actual dates.

## Calendars

- Standard: Mon-Fri 08:00-12:00, 13:00-17:00; Sat-Sun off.

## Resources

| Resource | Group | Unit | Rate |
| --- | --- | --- | --- |
| Architect | Consultant |  | 9 |
| Draftsperson | Staff |  | 7 |
| Building Clerk | Staff |  | 8 |
| Supervisor | Staff |  | 12 |
| Rigger | Wages |  | 5 |
| Boilermaker | Wages |  | 5 |
| Welder | Wages |  | 6 |
| Carpenter | Wages |  | 7 |
| Painter | Wages |  | 6 |
| Labourer | Wages |  | 6 |
| Driver | Wages |  | 8 |
| No Barrier Fencing | Contractor |  | 3 |
| Rock Solid Concrete | Contractor |  | 4 |
| Listen Ear Audio | Contractor |  | 5 |
| In Focus Video | Contractor |  | 5 |
| Pure Grass Turf | Contractor |  | 5 |
| Building Inspector | Government |  | 5 |
| High Jib Crane | Equipment |  | 7 |
| Grader | Equipment |  | 6 |
| Air Compressor | Equipment |  | 7 |
| Utility | Equipment |  | 5 |
| Electrician | Staff |  | 7 |
| Plumber | Staff |  | 5 |
| Astro Turf | Material | Square Matre | 12 |
| Paint | Ute | Ultre | 20 |
| Supervisor, Electrician |  |  |  |
| Tax |  |  |  |
| Bonus |  |  |  |
| Part Time Fee |  |  |  |
| Logictis Cost |  |  |  |

## Schedule

| ID | WBS | Task | Type | Duration | Start | Finish | Predecessors | Complete | Remaining | Actual finish | Total slack | Free slack | Resources | Work | Actual work | Cost | Actual cost | Dependencies |
| --- | --- | --- | --- | --- | --- | --- | --- | --- | --- | --- | --- | --- | --- | --- | --- | --- | --- | --- |
| 1 | 1 | **Cost of Project** |  | 272d | 2026-02-02 A | 2027-02-17 |  | 60% | 107.77d |  | 0d |  |  | 15510h | 9486h | 104,192 | 64,092 |  |
| 2 | 1.1 | **Planning** |  | 20d | 2026-02-02 A | 2026-02-27 |  | 100% |  | 2026-04-02 |  |  |  | 678h | 678h | 5,620 | 5,620 |  |
| 3 | 1.1.1 | Creating architectural plans |  | 3w | 2026-02-02 A | 2026-02-20 A |  | 100% |  |  |  |  | Draftsperson [200%]; Building Clerk [25%]; Architect | 390h | 390h | 3,000 | 3,000 |  |
| 4 | 1.1.2 | Submit plans for approval |  | 1mo | 2026-02-23 A | 2026-03-20 A | 3 | 100% |  |  |  |  | Architect | 160h | 160h | 1,440 | 1,440 |  |
| 5 | 1.1.3 | Order materials |  | 8d | 2026-03-23 A | 2026-04-01 A | 4 | 100% |  |  |  |  | Draftsperson; Building Clerk | 128h | 128h | 960 | 960 |  |
| 6 | 1.1.4 | Planning Completed | manual | 1d | 2026-04-02 A | 2026-04-02 A | 3, 4, 5 | 100% |  |  |  |  | Part Time Fee [0.1%]; Bonus [0.1%] |  |  | 220 | 220 | 2,3,4 |
| 7 | 1.2 | **Site Works** |  | 15d | 2026-04-07 A | 2026-04-27 |  | 100% |  | 2026-05-13 |  |  |  | 936h | 936h | 7,544 | 7,544 |  |
| 8 | 1.2.1 | Erect fencing |  | 3d | 2026-04-07 A | 2026-04-09 A | 6 | 100% |  |  |  |  | No Barrier Fencing | 24h | 24h | 72 | 72 |  |
| 9 | 1.2.2 | Erect site building |  | 4d | 2026-04-10 A | 2026-04-15 A | 8 | 100% |  |  |  |  | Carpenter [400%]; Supervisor; Labourer | 192h | 192h | 1,472 | 1,472 |  |
| 10 | 1.2.3 | Clear and level site |  | 3w | 2026-04-16 A | 2026-05-06 A | 9 | 100% |  |  |  |  | Supervisor; Driver [200%]; Grader [200%] | 600h | 600h | 4,800 | 4,800 |  |
| 11 | 1.2.4 | Prepare drainage infrastructure |  | 1w | 2026-05-07 A | 2026-05-13 A | 10 | 100% |  |  |  |  | Plumber [200%]; Supervisor [50%] | 60h | 60h | 440 | 440 |  |
| 12 | 1.2.5 | Prepare cabling infrastructure |  | 1w | 2026-05-07 A | 2026-05-13 A | 10 | 100% |  |  |  |  | Electrician [300%]; Supervisor [50%] | 60h | 60h | 520 | 520 |  |
| 13 | 1.2.6 | Site Works Completed | milestone, manual | 0d | 2026-05-11 A | 2026-05-11 A | 8, 9, 10, 11, 12 | 100% |  |  |  |  | Logictis Cost |  |  | 240 | 240 | 7,8,9,10,11 |
| 14 | 1.3 | **Building Construction** |  | 60d | 2026-05-11 A | 2026-07-31 |  | 87% | 8.06d |  |  |  |  | 10472h | 7872h | 69,102 | 50,928 |  |
| 15 | 1.3.1 | Pour foundations |  | 4d | 2026-05-11 A | 2026-05-14 A | 13 | 100% |  |  |  |  | Rock Solid Concrete | 32h | 32h | 128 | 128 | 12 |
| 16 | 1.3.2 | Erect steelwork |  | 3mo | 2026-05-15 A | 2026-08-06 A | 15 | 100% |  |  |  |  | Supervisor [50%]; Boilermaker [600%]; Driver [200%]; High Jib Crane; Labourer [600%]; Rigger [600%]; Utility; Welder [500%] | 3600h | 3600h | 23,040 | 23,040 | 14 |
| 17 | 1.3.3 | Erect wall |  | 2mo | 2026-08-07 A | 2026-10-01 A | 16 | 100% |  |  |  |  | Supervisor [50%]; Air Compressor; Carpenter [700%]; Driver; Electrician [75%]; Grader; Labourer [400%]; Plumber [25%] | 2080h | 2080h | 14,880 | 14,880 | 15 |
| 18 | 1.3.4 | Install roofing superstructure |  | 2w | 2026-10-02 A | 2026-10-15 A | 17 | 100% |  |  |  |  | Supervisor [50%]; Rigger [500%]; Boilermaker [500%]; Welder [300%]; Labourer [500%]; Driver [200%]; High Jib Crane; Utility; Air Compressor; Plumber [50%] | 1920h | 1920h | 11,320 | 11,320 | 16 |
| 19 | 1.3.5 | Install roofing retracting mechanism |  | 1w | 2026-10-16 A | 2026-10-22 | 18 | 20% | 0.8w |  | 34d | 0d | Supervisor [50%]; Welder; Boilermaker [200%]; Rigger [200%]; Electrician [200%]; Driver; High Jib Crane | 380h | 76h | 2,440 | 488 | 17 |
| 20 | 1.3.6 | Erect seating tiers |  | 3w | 2026-10-16 A | 2026-11-05 | 19SS | 7% | 2.8w |  | 24d | 0d | Supervisor [50%]; Carpenter [800%]; Welder [200%]; Boilermaker [200%]; Labourer [500%]; Driver; Utility; Air Compressor | 2460h | 164h | 16,080 | 1,072 | 18SS |
| 21 | 1.3.7 | Building Construction Completed | milestone, manual | 0d | 2026-11-06 | 2026-11-06 | 15, 16, 17, 18, 19, 20 |  |  |  |  |  | Logictis Cost; Bonus |  |  | 1,214 |  | 14,15,16,17,18,19 |
| 22 | 1.4 | **Fit Out** |  | 20d | 2026-11-06 | 2026-12-03 |  |  |  |  |  |  |  | 3000h |  | 18,250 |  |  |
| 23 | 1.4.1 | Fit all windows and doors |  | 2w | 2026-11-06 | 2026-11-19 | 21 |  |  |  | 49d | 30d | Carpenter [500%]; Labourer [200%] | 560h |  | 3,760 |  | 20 |
| 24 | 1.4.2 | Install electrical cabling |  | 1w | 2026-11-06 | 2026-11-12 | 21 |  |  |  | 44d | 0d | Electrician [300%]; Labourer [200%] | 200h |  | 1,320 |  | 20 |
| 25 | 1.4.3 | Install electrical fittings and fixtures |  | 2w | 2026-11-13 | 2026-11-26 | 24 |  |  |  | 44d | 25d | Electrician [300%] | 240h |  | 1,680 |  | 23 |
| 26 | 1.4.4 | Install all plumbing |  | 2w | 2026-11-06 | 2026-11-19 | 21 |  |  |  | 39d | 0d | Plumber [200%]; Labourer [200%] | 320h |  | 1,760 |  | 20 |
| 27 | 1.4.5 | Install plumbing fixtures and fitting |  | 2w | 2026-11-20 | 2026-12-03 | 26 |  |  |  | 39d | 20d | Plumber [200%] | 160h |  | 800 |  | 25 |
| 28 | 1.4.6 | Lay astro turf |  | 1w | 2026-11-06 | 2026-11-12 | 21 |  |  |  | 54d | 35d | Pure Grass Turf | 40h |  | 200 |  | 20 |
| 29 | 1.4.7 | Erect handrails and fencing |  | 2w | 2026-11-06 | 2026-11-19 | 21 |  |  |  | 24d | 0d | Welder [400%]; Boilermaker [200%] | 480h |  | 2,720 |  | 20 |
| 30 | 1.4.8 | Paint rooms, fixtures, fittings, etc. |  | 1mo | 2026-11-20 | 2026-12-17 | 29 |  |  |  | 24d | 0d | Painter [500%] | 800h |  | 4,800 |  | 28 |
| 31 | 1.4.9 | Install PA system |  | 2d | 2026-11-13 | 2026-11-16 | 24 |  |  |  | 47d | 23d | Listen Ear Audio | 16h |  | 80 |  | 23 |
| 32 | 1.4.10 | Install video imaging equipment |  | 3d | 2026-11-13 | 2026-11-17 | 24 |  |  |  | 46d | 22d | In Focus Video | 24h |  | 120 |  | 23 |
| 33 | 1.4.11 | Fit out control room |  | 1w | 2026-12-18 | 2026-12-24 | 30, 31, 32 |  |  |  | 24d | 5d | Electrician [200%]; Listen Ear Audio; In Focus Video | 160h |  | 960 |  |  |
| 34 | 1.4.12 | Fit Out Completed | milestone, manual | 0d | 2027-01-01 | 2027-01-01 | 23, 24, 25, 26, 27, 28, 29, 30, 31, 32, 33 |  |  |  |  |  | Tax |  |  | 50 |  |  |

| ID | WBS | Task | Type | Duration | Start | Finish | Predecessors | Total slack | Free slack | Resources | Work | Cost |
| --- | --- | --- | --- | --- | --- | --- | --- | --- | --- | --- | --- | --- |
| 35 | 1.5 | **Commissioning** |  | 5d | 2027-01-01 | 2027-01-07 |  |  |  |  | 424h | 3,676 |
| 36 | 1.5.1 | Test roof mechanism |  | 1w | 2027-01-01 | 2027-01-07 | 34 | 19d | 0d | Electrician [200%]; Rigger; Supervisor | 160h | 1,240 |
| 37 | 1.5.2 | Test PA system |  | 2d | 2027-01-01 | 2027-01-04 | 34 | 22d | 3d | Listen Ear Audio | 16h | 80 |
| 38 | 1.5.3 | Test video imaging equipment |  | 2d | 2027-01-01 | 2027-01-04 | 34 | 22d | 3d | In Focus Video | 16h | 80 |
| 39 | 1.5.4 | Test control room equipment |  | 1w | 2027-01-08 | 2027-01-14 | 36, 37, 38 | 19d | 0d | Supervisor; Listen Ear Audio [20%]; In Focus Video [20%]; Architect; Electrician [200%] | 176h | 1,480 |
| 40 | 1.5.5 | Obtain official occupancy |  | 1d | 2027-01-15 | 2027-01-15 | 39 | 19d | 0d | Architect; Building Clerk; Supervisor | 24h | 232 |
| 41 | 1.5.6 | Obtain safety certification |  | 2d | 2027-01-18 | 2027-01-19 | 40 | 19d | 0d | Supervisor | 16h | 192 |
| 42 | 1.5.7 | Official opening |  | 1d | 2027-01-20 | 2027-01-20 | 41 | 19d |  | Supervisor [200%] | 16h | 192 |
| 43 | 1.5.8 | Commissioning Completed | milestone, manual | 0d | 2027-02-17 | 2027-02-17 | 36, 37, 38, 39, 40, 41, 42 |  |  | Bonus |  | 180 |
